# 电解液充电能力评估（一 阶段）

How a schedule from a web Gantt chart changed from version to version. A marks actual dates.

## Version 1 (saved 2025-12-09)

| ID | WBS | Task | Duration | Start | Finish | Predecessors | Complete |
| --- | --- | --- | --- | --- | --- | --- | --- |
| 2 | 1 | **平台工作（本征参数测量）** | 36d | 2025-12-09 | 2026-01-27 |  | 4% |
| 3 | 1.1 | **电解液配置（高通量）** | 17d | 2025-12-09 | 2025-12-31 |  | 9% |
| 4 |  | 批次1 | 5d | 2025-12-09 | 2025-12-15 |  | 30% |
| 5 |  | 批次2 | 7d | 2025-12-16 | 2025-12-24 | 4 |  |
| 6 |  | 批次3 | 5d | 2025-12-25 | 2025-12-31 | 5 |  |
| 7 | 1.2 | **电解液配置+扩散系数收集（高通量）** | 19d | 2026-01-01 | 2026-01-27 |  |  |
| 8 |  | 批次4 | 7d | 2026-01-01 | 2026-01-09 | 14 |  |
| 9 |  | 批次5 | 6d | 2026-01-12 | 2026-01-19 | 8 |  |
| 10 |  | 批次6 | 6d | 2026-01-20 | 2026-01-27 | 9 |  |
| 11 | 2 | **方法类工作（提升准确性&通量）** | 41d | 2025-12-09 | 2026-02-03 |  | 6% |
| 12 |  | 迁移数方法可靠性验证 | 10d | 2025-12-09 | 2025-12-22 |  | 40% |
| 13 |  | 扩散系数方法在羧酸酯体系优化 | 6d | 2025-12-16 | 2025-12-23 | 4 |  |
| 14 |  | 扩散系数高通量数据处理 | 9d | 2025-12-19 | 2025-12-31 |  |  |
| 15 | 2.4 | **迁移数采集** | 31d | 2025-12-23 | 2026-02-03 |  |  |
| 16 |  | 批次1 | 5d | 2025-12-23 | 2025-12-29 | 4, 12 |  |
| 17 |  | 批次2 | 6d | 2025-12-25 | 2026-01-01 | 5 |  |
| 18 |  | 批次3 | 5d | 2026-01-01 | 2026-01-07 | 6 |  |
| 19 |  | 批次4（+电极电势） | 6d | 2026-01-12 | 2026-01-19 | 8 |  |
| 20 |  | 批次5（+电极电势） | 5d | 2026-01-20 | 2026-01-26 | 9, 19 |  |
| 21 |  | 批次6（+电极电势） | 5d | 2026-01-28 | 2026-02-03 | 10, 20 |  |
| 22 | 2.5 | **扩散系数、电极电势收集** | 14d | 2025-12-24 | 2026-01-12 |  |  |
| 23 |  | 批次1（手动） | 5d | 2025-12-24 | 2025-12-30 | 4, 13 |  |
| 24 |  | 批次2（手动） | 5d | 2025-12-31 | 2026-01-06 | 5, 23 |  |
| 25 |  | 批次3（手动） | 4d | 2026-01-07 | 2026-01-12 | 6, 24 |  |
| 26 | 3 | **模型工作（参数模型、电化学仿真）** | 59d | 2025-12-09 | 2026-02-27 |  |  |
| 27 | 3.1 | **仿真模型对标优化** | 30d | 2025-12-09 | 2026-01-19 |  |  |
| 28 |  | 电性能对标数据收集 | 13d | 2025-12-09 | 2025-12-25 |  |  |
| 29 |  | 电迁移、扩散电流拆分 | 13d | 2025-12-12 | 2025-12-30 |  |  |
| 30 |  | 基于本征参数的模型调优 | 18d | 2025-12-25 | 2026-01-19 |  |  |
| 31 | 3.2 | **参数模型建设（基于 5 元配方）** | 25d | 2026-01-09 | 2026-02-12 |  |  |
| 32 |  | 电导率模型 | 11d | 2026-01-09 | 2026-01-23 |  |  |
| 33 |  | 扩散系数模型 | 11d | 2026-01-26 | 2026-02-09 |  |  |
| 34 |  | 迁移数模型（视情况） | 8d | 2026-02-03 | 2026-02-12 |  |  |
| 35 |  | 基于参数模型的性能预测 | 11d | 2026-02-13 | 2026-02-27 | 31, 27 |  |

## Version 2 (saved 2025-12-09)

Last finish stays 2026-02-27.

Changed:

| ID | Task | Start | Finish | Duration |
| --- | --- | --- | --- | --- |
| 27 | **仿真模型对标优化** |  | 2026-01-19 → 2026-01-09 (-10d) | 30d → 24d |
| 28 | 电性能对标数据收集 |  | 2025-12-25 → 2025-12-26 (+1d) | 13d → 14d |
| 29 | 电迁移、扩散电流拆分 |  | 2025-12-30 → 2025-12-31 (+1d) | 13d → 14d |
| 30 | 基于本征参数的模型调优 | 2025-12-25 → 2025-12-18 (-7d) | 2026-01-19 → 2026-01-09 (-10d) | 18d → 17d |
| 31 | **参数模型建设（基于 5 元配方）** | 2026-01-09 → 2026-01-05 (-4d) |  | 25d → 29d |
| 32 | 电导率模型 | 2026-01-09 → 2026-01-05 (-4d) | 2026-01-23 → 2026-01-21 (-2d) | 11d → 13d |
| 33 | 扩散系数模型 | 2026-01-26 → 2026-01-21 (-5d) |  | 11d → 14d |

## Version 3 (saved 2025-12-11)

Last finish stays 2026-02-27. Complete tasks 0 → 2.

Added:

| ID | Task | Duration | Start | Finish | Predecessors |
| --- | --- | --- | --- | --- | --- |
| 2 | 配方空间确认 | 1d | 2025-12-03 | 2025-12-03 |  |
| 5 | 批次0（EL1~EL15） | 5d | 2025-12-09 | 2025-12-15 |  |
| 15 | **迁移数、电极电势、扩散系数采集（手动）** | 35d | 2025-12-22 | 2026-02-06 |  |
| 16 | 批次0（EL1~EL15） | 5d | 2025-12-22 | 2025-12-26 | 12 |
| 20 | 批次4 | 7d | 2026-01-21 | 2026-01-29 |  |
| 21 | 批次5 | 7d | 2026-01-29 | 2026-02-06 |  |
| 24 | 电性能对标数据收集（EL1~EL15） | 17d | 2025-12-04 | 2025-12-26 |  |

Removed: 7 电解液配置+扩散系数收集（高通量）; 10 批次6; 15 迁移数采集; 19 批次4（+电极电势）; 20 批次5（+电极电势）; 21 批次6（+电极电势）; 22 扩散系数、电极电势收集; 23 批次1（手动）; 24 批次2（手动）; 25 批次3（手动）; 28 电性能对标数据收集

Changed:

| ID | Task | Start | Finish | Duration | Complete | Predecessors |
| --- | --- | --- | --- | --- | --- | --- |
| 4 | **电解液配置（高通量）** |  | 2025-12-31 → 2026-01-27 (+27d) | 17d → 36d | 9% → 4% |  |
| 6 | 批次1 | 2025-12-09 → 2025-12-16 (+7d) | 2025-12-15 → 2025-12-24 (+9d) | 5d → 7d | 30% → 0% | none → 5 |
| 7 | 批次2 | 2025-12-16 → 2025-12-25 (+9d) | 2025-12-24 → 2026-01-01 (+8d) | 7d → 6d |  |  |
| 8 | 批次3 | 2025-12-25 → 2026-01-02 (+8d) | 2025-12-31 → 2026-01-09 (+9d) | 5d → 6d |  |  |
| 9 | 批次4 | 2026-01-01 → 2026-01-12 (+11d) | 2026-01-09 → 2026-01-19 (+10d) | 7d → 6d |  | 14 → 8 |
| 10 | 批次5 | 2026-01-12 → 2026-01-20 (+8d) | 2026-01-19 → 2026-01-27 (+8d) |  |  |  |
| 11 | **方法类工作（提升准确性&通量）** |  | 2026-02-03 → 2026-02-06 (+3d) | 41d → 44d | 6% → 5% |  |
| 12 | 迁移数方法可靠性验证 |  | 2025-12-22 → 2025-12-19 (-3d) | 10d → 9d |  |  |
| 13 | 扩散系数方法在羧酸酯体系优化 | 2025-12-16 → 2025-12-15 (-1d) | 2025-12-23 → 2025-12-26 (+3d) | 6d → 10d |  | 6 → none |
| 14 | 扩散系数高通量数据处理 |  | 2025-12-31 → 2026-01-09 (+9d) | 9d → 16d |  |  |
| 17 | 批次1 | 2025-12-23 → 2025-12-29 (+6d) | 2025-12-29 → 2026-01-06 (+8d) | 5d → 7d |  | 6, 12 → none |
| 18 | 批次2 | 2025-12-25 → 2026-01-05 (+11d) | 2026-01-01 → 2026-01-13 (+12d) | 6d → 7d |  | 7 → none |
| 19 | 批次3 | 2026-01-01 → 2026-01-13 (+12d) | 2026-01-07 → 2026-01-21 (+14d) | 5d → 7d |  | 8 → none |
| 22 | **模型工作（参数模型、电化学仿真）** | 2025-12-09 → 2025-12-04 (-5d) |  | 59d → 62d | 0% → 16% |  |
| 23 | **仿真模型对标优化** | 2025-12-09 → 2025-12-04 (-5d) |  | 24d → 27d | 0% → 33% |  |
| 25 | 电迁移、扩散电流拆分 | 2025-12-12 → 2025-12-08 (-4d) | 2025-12-31 → 2025-12-25 (-6d) |  | 0% → 40% |  |
| 28 | 电导率模型 |  | 2026-01-21 → 2026-01-26 (+5d) | 13d → 16d |  |  |
| 29 | 扩散系数模型 | 2026-01-21 → 2026-01-26 (+5d) |  | 14d → 11d |  |  |
| 30 | 迁移数模型（视情况） | 2026-02-03 → 2026-01-29 (-5d) |  | 8d → 11d |  |  |

## Version 4 (saved 2025-12-12)

Last finish stays 2026-02-27.

Changed:

| ID | Task | Start | Finish | Duration | Complete | Predecessors |
| --- | --- | --- | --- | --- | --- | --- |
| 3 | **平台工作（本征参数测量）** |  | 2026-01-27 → 2026-01-26 (-1d) | 36d → 35d | 4% → 12% |  |
| 4 | **电解液配置（高通量）** |  | 2026-01-27 → 2026-01-26 (-1d) | 36d → 35d | 4% → 12% |  |
| 5 | 批次0（EL1~EL15） |  | 2025-12-15 → 2025-12-12 (-3d) | 5d → 4d |  |  |
| 6 | 批次1 | 2025-12-16 → 2025-12-17 (+1d) | 2025-12-24 → 2025-12-23 (-1d) | 7d → 5d |  | 5 → none |
| 7 | 批次2 | 2025-12-25 → 2025-12-24 (-1d) | 2026-01-01 → 2025-12-31 (-1d) |  |  |  |
| 8 | 批次3 | 2026-01-02 → 2026-01-01 (-1d) | 2026-01-09 → 2026-01-08 (-1d) |  |  |  |
| 9 | 批次4 | 2026-01-12 → 2026-01-09 (-3d) | 2026-01-19 → 2026-01-16 (-3d) |  |  |  |
| 10 | 批次5 | 2026-01-20 → 2026-01-19 (-1d) | 2026-01-27 → 2026-01-26 (-1d) |  |  |  |
